# FlexiTime

Schedule from GanttProject, 2005-01-04 to 2005-02-24.
FlexiTime
Gestion des emplois du Temps / Projet de Génie Logiciel / Informatique Réseaux 3° année / Ingénieurs 2000 - Université de Marne-La-Vallée

## Calendars

- Project calendar: Mon-Fri working; Sat-Sun off.

## Resources

| Resource | Group |
| --- | --- |
| Jérôme GUERS |  |
| Fabien APPERT | Secrétaire + Responsable Client |
| Adrien BOUVET | Site Web + Responsable Qualité |
| Valère FOREL | Responsable Développement & test |
| Guillaume GUERRIN | Responsable technique |
| Prâsad RAMASSAMY | Responsable Interface Graphique |

## Schedule

| ID | WBS | Task | Duration | Start | Finish | Resources |
| --- | --- | --- | --- | --- | --- | --- |
| 1 | 1 | **Développement** | 30d | 2005-01-04 | 2005-02-14 |  |
| 2 | 1.1 | **Préparation des outils de travail** | 7d | 2005-01-04 | 2005-01-12 |  |
| 3 | 1.1.1 | Finition du FlexiGuide | 6d | 2005-01-04 | 2005-01-11 | Jérôme GUERS [20%] |
| 4 | 1.1.2 | Mise en place des serveurs | 4d | 2005-01-07 | 2005-01-12 | Adrien BOUVET |
| 5 | 1.2 | **flexitime.common** | 3d | 2005-01-04 | 2005-01-06 |  |
| 6 | 1.2.1 | **flexitime.common.data** | 3d | 2005-01-04 | 2005-01-06 |  |
| 7 | 1.2.1.1 | Dév flexitime.common.data | 3d | 2005-01-04 | 2005-01-06 | Adrien BOUVET |
| 8 | 1.2.1.2 | Test flexitime.common.data | 3d | 2005-01-04 | 2005-01-06 | Guillaume GUERRIN [50%] |
| 9 | 1.2.2 | **flexitime.common.tools** | 3d | 2005-01-04 | 2005-01-06 |  |
| 10 | 1.2.2.1 | Dev flexitime.common.tools | 3d | 2005-01-04 | 2005-01-06 | Valère FOREL |
| 11 | 1.2.2.2 | Test flexitime.common.tools | 3d | 2005-01-04 | 2005-01-06 | Guillaume GUERRIN [50%] |
| 12 | 1.2.3 | **flexitime.common.rmi** | 3d | 2005-01-04 | 2005-01-06 |  |
| 13 | 1.2.3.1 | Dev flexitime.common.rmi | 3d | 2005-01-04 | 2005-01-06 | Prâsad RAMASSAMY [30%] |
| 14 | 1.2.4 | **flexitime.common.event** | 3d | 2005-01-04 | 2005-01-06 |  |
| 15 | 1.2.4.1 | Dev flexitime.common.event | 3d | 2005-01-04 | 2005-01-06 | Prâsad RAMASSAMY [20%] |
| 16 | 1.2.4.2 | Test flexitime.common.event | 3d | 2005-01-04 | 2005-01-06 | Prâsad RAMASSAMY [20%] |
| 17 | 1.3 | **flexitime.server** | 22d | 2005-01-07 | 2005-02-07 |  |
| 18 | 1.3.1 | **flexitime.server.core** | 10d | 2005-01-07 | 2005-01-20 |  |
| 19 | 1.3.1.1 | Dev flexitime.server.core | 4d | 2005-01-11 | 2005-01-14 | Valère FOREL |
| 20 | 1.3.1.2 | Test flexitime.server.core | 4d | 2005-01-11 | 2005-01-14 | Adrien BOUVET |
| 21 | 1.3.1.3 | **flexitime.server.core.management** | 2d | 2005-01-15 | 2005-01-18 |  |
| 22 | 1.3.1.3.1 | Dev flexitime.server.core.management | 2d | 2005-01-15 | 2005-01-18 | Valère FOREL |
| 23 | 1.3.1.3.2 | Test flexitime.server.core.management | 2d | 2005-01-15 | 2005-01-18 | Adrien BOUVET |
| 24 | 1.3.1.4 | **flexitime.server.core.admin** | 3d | 2005-01-07 | 2005-01-11 |  |
| 25 | 1.3.1.4.1 | Dev flexitime.server.core.admin | 3d | 2005-01-07 | 2005-01-11 | Guillaume GUERRIN [50%] |
| 26 | 1.3.1.4.2 | Test flexitime.server.core.admin | 3d | 2005-01-07 | 2005-01-11 | Guillaume GUERRIN [50%] |

Notes:
- 3: Modification des erreurs signalées / Recherche du plugin 1.5 / Ajout de parties éventuelles
- 4: PostGres / TomCat / ssh / LDAP

| ID | WBS | Task | Duration | Start | Finish | Resources |
| --- | --- | --- | --- | --- | --- | --- |
| 27 | 1.3.2 | **flexitime.server.io** | 22d | 2005-01-07 | 2005-02-07 |  |
| 28 | 1.3.2.1 | **flexitime.server.io.FlexiLDAP** | 3d | 2005-01-10 | 2005-01-12 |  |
| 29 | 1.3.2.1.1 | Test flexitime.server.io.FlexiLDAP | 3d | 2005-01-10 | 2005-01-12 | Guillaume GUERRIN [50%] |
| 30 | 1.3.2.2 | **flexitime.server.io.FlexiFOP** | 5d | 2005-01-24 | 2005-01-28 |  |
| 31 | 1.3.2.2.1 | Dev flexitime.server.io.FlexiFOP | 2d | 2005-01-24 | 2005-01-25 | Guillaume GUERRIN |
| 32 | 1.3.2.2.2 | XSLT flexitime.server.io.FlexiFOP | 3d | 2005-01-26 | 2005-01-28 | Jérôme GUERS [30%] |
| 33 | 1.3.2.2.3 | Test flexitime.server.io.FlexiFOP | 2d | 2005-01-24 | 2005-01-25 | Valère FOREL [50%] |
| 34 | 1.3.2.3 | **flexitime.server.io.FleXML** | 5d | 2005-01-24 | 2005-01-28 |  |
| 35 | 1.3.2.3.1 | Dev flexitime.server.io.FleXML | 2d | 2005-01-24 | 2005-01-25 | Jérôme GUERS [30%] |
| 36 | 1.3.2.3.2 | Test flexitime.server.io.FleXML | 2d | 2005-01-27 | 2005-01-28 | Adrien BOUVET |
| 37 | 1.3.2.4 | **flexitime.server.io.FlexiPrint** | 3d | 2005-01-17 | 2005-01-19 |  |
| 38 | 1.3.2.4.1 | Test flexitime.server.io.FlexiPrint | 3d | 2005-01-17 | 2005-01-19 |  |
| 39 | 1.3.2.5 | **flexitime.server.io.FlexiMail** | 3d | 2005-01-17 | 2005-01-19 |  |
| 40 | 1.3.2.5.1 | Test flexitime.server.io.FlexiMail | 3d | 2005-01-17 | 2005-01-19 |  |
| 41 | 1.3.2.6 | **flexitime.server.io.storage** | 10d | 2005-01-07 | 2005-01-20 |  |
| 42 | 1.3.2.6.1 | Dev flexitime.server.io.storage | 4d | 2005-01-07 | 2005-01-12 | Prâsad RAMASSAMY |
| 43 | 1.3.2.6.2 | Test flexitime.server.io.storage | 6d | 2005-01-11 | 2005-01-18 | Fabien APPERT |
| 44 | 1.4 | **flexitime.richClient** | 23d | 2005-01-04 | 2005-02-03 |  |
| 45 | 1.4.1 | **flexitime.richClient.models** | 5d | 2005-01-17 | 2005-01-21 |  |
| 46 | 1.4.1.1 | Dev flexitime.richClient.models | 5d | 2005-01-17 | 2005-01-21 | Fabien APPERT |
| 47 | 1.4.1.2 | Test flexitime.richClient.models | 5d | 2005-01-17 | 2005-01-21 | Prâsad RAMASSAMY |
| 48 | 1.4.2 | **flexitime.richClient.gui** | 23d | 2005-01-04 | 2005-02-03 |  |
| 49 | 1.4.2.1 | flexitime.richClient.gui.actions | 4d | 2005-01-13 | 2005-01-18 | Guillaume GUERRIN |
| 50 | 1.4.2.2 | **flexitime.richClient.gui.panel** | 18d | 2005-01-04 | 2005-01-27 |  |
| 51 | 1.4.2.2.1 | flexitime.richClient.gui.panel.management | 5d | 2005-01-17 | 2005-01-21 | Guillaume GUERRIN |
| 52 | 1.4.2.2.2 | flexitime.richClient.gui.panel.exploitation | 7d | 2005-01-04 | 2005-01-12 | Fabien APPERT |
| 53 | 1.4.2.3 | flexitime.richClient.gui.views | 5d | 2005-01-22 | 2005-01-28 | Adrien BOUVET |
| 54 | 1.5 | flexitime.ligthClient | 5d | 2005-01-17 | 2005-01-21 | Valère FOREL |

| ID | WBS | Task | Duration | Start | Finish | Resources |
| --- | --- | --- | --- | --- | --- | --- |
| 55 | 1.6 | **Validation de l'avancement et du fonctionnement** | 30d | 2005-01-04 | 2005-02-14 |  |
| 56 | 1.6.1 | Mise en place du suivi sur Wiki | 2d | 2005-01-04 | 2005-01-05 | Jérôme GUERS [50%] |
| 57 | 1.6.2 | Validation des tests et de l'avancement | 24d | 2005-01-10 | 2005-02-10 | Jérôme GUERS [50%] |
| 58 | 1.6.3 | **Rédaction des fiches de bugs** | 5d | 2005-01-29 | 2005-02-04 |  |
| 59 | 1.6.3.1 | Fonctions génériques | 5d | 2005-01-29 | 2005-02-04 | Adrien BOUVET |
| 60 | 1.6.3.2 | Mode Gestion | 5d | 2005-01-29 | 2005-02-04 | Guillaume GUERRIN |
| 61 | 1.6.3.3 | Mode Exploitation | 5d | 2005-01-29 | 2005-02-04 | Valère FOREL; Fabien APPERT |
| 62 | 1.6.3.4 | Mode Historique | 5d | 2005-01-29 | 2005-02-04 | Prâsad RAMASSAMY |
| 63 | 2 | Correction et mise en forme | 13d | 2005-02-08 | 2005-02-24 |  |
